# CasperJet 2011

Schedule from MS Project, 2011-05-03 to 2012-01-02, A marks actual dates.
Transcom Group

## Calendars

- Standard: Mon-Thu 08:00-12:00, 13:00-17:00; Fri off; Sat 09:30-13:30; Sun 08:00-12:00, 13:00-17:00.

## Resources

| Resource |
| --- |
| Shyam |
| Shahnoor |
| ArifKhan |
| Dipok |
| Mazhar |

## Schedule

| ID | WBS | Task | Type | Duration | Start | Finish | Predecessors | Complete | Remaining | Total slack | Free slack | Constraint | Resources | Work | Actual work |
| --- | --- | --- | --- | --- | --- | --- | --- | --- | --- | --- | --- | --- | --- | --- | --- |
| 1 | 1 | **CasperJet** |  | 191.5d? | 2011-05-03 A | 2012-01-02 |  | 21% | 151.29d? | 0d |  |  |  | 2272.48h | 480.48h |
| 2 | 1.1 | **Sales & Distribution Management** |  | 68d? | 2011-05-03 A | 2011-07-28 |  | 81% | 12.65d? | 123.5d |  |  |  | 389.98h | 349.98h |
| 3 | 1.1.1 | **Web based Decentralized module** |  | 68d? | 2011-05-03 A | 2011-07-28 |  | 81% | 12.65d? | 123.5d |  |  |  | 389.98h | 349.98h |
| 4 | 1.1.1.1 | Sales Order |  | 12.81d | 2011-05-03 A | 2011-05-18 A |  | 100% |  |  |  | finish no earlier than 2011-05-18 | Shyam | 102.5h | 102.5h |
| 5 | 1.1.1.2 | Cash Collection |  | 17.31d? | 2011-06-08 A | 2011-06-29 A |  | 100% |  |  |  | finish no earlier than 2011-06-30 | Shyam | 138.48h | 138.48h |
| 6 | 1.1.1.3 | Process Delivery |  | 8.31d? | 2011-05-22 A | 2011-05-31 A |  | 100% |  |  |  | finish no earlier than 2011-05-31 | Shyam | 66.5h | 66.5h |
| 7 | 1.1.1.4 | Complete Delivery |  | 5.31d? | 2011-06-01 A | 2011-06-07 A |  | 100% |  |  |  | finish no earlier than 2011-06-07 | Shyam | 42.5h | 42.5h |
| 8 | 1.1.1.5 | Develop Required reports |  | 10d | 2011-07-03 | 2011-07-14 |  |  |  | 127.81d | 10.5d | start no earlier than 2011-07-03 | Shyam [50%] | 40h |  |
| 9 | 1.1.1.6 | Deployment at CTG | milestone | 0d | 2011-07-28 | 2011-07-28 | 8 |  |  | 117.31d |  | start no earlier than 2011-07-28 |  |  |  |
| 10 | 1.2 | **IT Equipment Management** |  | 0d | 2011-07-02 A | 2011-07-02 A |  | 100% |  |  |  |  |  |  |  |
| 11 | 1.2.1 | Add Type in Supplier & Filter Suppliers in IT Equipment accordingly | milestone | 0d | 2011-07-02 A | 2011-07-02 A |  | 100% |  |  |  | finish no earlier than 2011-07-02 | Shyam |  |  |
| 12 | 1.3 | **User Security** |  | 12d | 2011-07-03 | 2011-07-18 |  |  |  | 132d |  |  |  | 48h |  |
| 13 | 1.3.1 | Data Level Security |  | 12d | 2011-07-03 | 2011-07-18 |  |  |  | 129.81d |  | start no earlier than 2011-07-03 | Shyam [50%] | 48h |  |
| 14 | 1.4 | **Office Assistance & Management (Web)** |  | 101.5d | 2011-07-02 | 2011-11-07 |  |  |  | 43.19d |  |  |  |  |  |
| 15 | 1.4.1 | Leave Application |  | 2d | 2011-07-02 | 2011-07-04 | 19 |  |  | 140.5d |  |  |  |  |  |
| 16 | 1.4.2 | Conveyance Bill |  | 2d | 2011-07-02 | 2011-07-04 | 19 |  |  | 140.5d |  |  |  |  |  |
| 17 | 1.4.3 | Internal Chatting |  | 30d | 2011-10-01 | 2011-11-07 |  |  |  | 41d |  | start no earlier than 2011-10-01 |  |  |  |
| 18 | 1.5 | **Human Resource Management** |  | 1d? | 2011-06-30 | 2011-06-30 |  |  |  | 142.69d |  |  |  |  |  |
| 19 | 1.5.1 | Employee Reporting Structure or OrgChart |  | 1d? | 2011-06-30 | 2011-06-30 |  |  |  | 140.5d | 0d |  |  |  |  |
| 20 | 1.6 | **Convert CasperNet to CasperJet** |  | 73.81d? | 2011-06-29 | 2011-10-01 |  |  |  | 72.69d |  |  |  | 1216h |  |
| 21 | 1.6.1 | Delete unused Module from CasperNet |  | 4d | 2011-06-29 | 2011-07-04 |  |  |  | 138.31d | 0d | start no earlier than 2011-06-29 | Shahnoor | 32h |  |
| 22 | 1.6.2 | Rewrite Basic Data modules of CasperNet (Web) in CasperJet |  | 2d? | 2011-07-04 | 2011-07-06 | 21 |  |  | 138.31d |  | start no earlier than 2011-06-30 | ArifKhan | 16h |  |
| 23 | 1.6.3 | Rewrite Reports of CasperNet (Web) in CasperJet (Web) |  | 73d | 2011-06-30 | 2011-10-01 |  |  |  | 70.5d |  |  | Dipok; Shahnoor | 1168h |  |
| 24 | 1.7 | **CJ.DMS** |  | 29.19d? | 2011-07-16 | 2011-08-22 |  |  |  | 104.5d |  |  |  | 24h |  |
| 25 | 1.7.1 | **First Phase** |  | 28.19d? | 2011-07-16 | 2011-08-21 |  |  |  | 104.5d |  |  |  | 24h |  |
| 26 | 1.7.1.1 | **Software Development** |  | 21.19d? | 2011-07-16 | 2011-08-11 |  |  |  | 104.5d | 0d |  |  | 24h |  |
| 27 | 1.7.1.1.1 | Add a Web project for DMS |  | 1d? | 2011-07-16 | 2011-07-17 |  |  |  | 121.5d | 0d | start no earlier than 2011-07-16 |  |  |  |
| 28 | 1.7.1.1.2 | Database Design for DMS |  | 1d? | 2011-07-16 | 2011-07-17 |  |  |  | 121.5d | 0d | start no earlier than 2011-07-16 |  |  |  |
| 29 | 1.7.1.1.3 | Login Module for Distributor or SMDP Users in CJ.DMS |  | 1d? | 2011-07-17 | 2011-07-18 | 27, 28 |  |  | 121.5d |  |  |  |  |  |
| 30 | 1.7.1.1.4 | Stock in Process in CJ.Win |  | 1d? | 2011-07-19 | 2011-07-20 |  |  |  | 119.81d |  | start no earlier than 2011-07-19 |  |  |  |
| 31 | 1.7.1.1.5 | Stock Adjustment Type management in CJ.Win |  | 1d? | 2011-07-20 | 2011-07-21 |  |  |  | 118.81d |  | start no earlier than 2011-07-20 |  |  |  |
| 32 | 1.7.1.1.6 | Stock Adjustment in CJ.DMS |  | 1d? | 2011-07-20 | 2011-07-21 |  |  |  | 118.81d |  | start no earlier than 2011-07-20 |  |  |  |
| 33 | 1.7.1.1.7 | Route management in CJ.DMS |  | 1d? | 2011-07-21 | 2011-07-23 |  |  |  | 117.81d |  | start no earlier than 2011-07-21 |  |  |  |
| 34 | 1.7.1.1.8 | Retail Outlet management in CJ.DMS |  | 1d? | 2011-07-24 | 2011-07-25 |  |  |  | 102.31d | 0d | start no earlier than 2011-07-24 | Mazhar | 8h |  |
| 35 | 1.7.1.1.9 | Promotional Rule management CJ.Win |  | 3d | 2011-07-25 | 2011-07-28 | 34 |  |  | 102.31d | 0d |  |  |  |  |
| 36 | 1.7.1.1.10 | Secondary Sales (Stock Out) recording in CJ.DMS |  | 4d | 2011-07-28 | 2011-08-02 | 35 |  |  | 102.31d | 0d |  |  |  |  |

| ID | WBS | Task | Duration | Start | Finish | Predecessors | Complete | Remaining | Total slack | Free slack | Constraint | Resources | Work | Actual work |
| --- | --- | --- | --- | --- | --- | --- | --- | --- | --- | --- | --- | --- | --- | --- |
| 37 | 1.7.1.1.11 | **Reports** | 7d? | 2011-08-02 | 2011-08-11 |  |  |  | 104.5d |  |  |  | 16h |  |
| 38 | 1.7.1.1.11.1 | Current Stock | 1d? | 2011-08-02 | 2011-08-03 | 36 |  |  | 102.31d | 0d |  | Mazhar | 8h |  |
| 39 | 1.7.1.1.11.2 | Stock Ledger | 1d? | 2011-08-03 | 2011-08-04 | 38 |  |  | 102.31d | 0d |  | Mazhar | 8h |  |
| 40 | 1.7.1.1.11.3 | Stock Statement | 1d? | 2011-08-04 | 2011-08-07 | 39 |  |  | 102.31d | 0d |  |  |  |  |
| 41 | 1.7.1.1.11.4 | Sales Report | 4d | 2011-08-07 | 2011-08-11 | 40 |  |  | 102.31d |  |  |  |  |  |
| 42 | 1.7.1.2 | Software Deployment | 7d | 2011-08-11 | 2011-08-21 | 26 |  |  | 102.31d | 0d |  |  |  |  |
| 43 | 1.7.2 | **Second Phase** | 1d? | 2011-08-21 | 2011-08-22 | 42 |  |  | 104.5d |  |  |  |  |  |
| 44 | 1.7.2.1 | IMEI wise Sales & Stock Management | 1d? | 2011-08-21 | 2011-08-22 |  |  |  | 61.31d |  |  |  |  |  |
| 45 | 1.7.2.2 | Payment & Retail Outlet Transation module | 1d? | 2011-08-21 | 2011-08-22 |  |  |  | 61.31d |  |  |  |  |  |
| 46 | 1.7.2.3 | **Report** | 1d? | 2011-08-21 | 2011-08-22 |  |  |  | 104.5d |  |  |  |  |  |
| 47 | 1.7.2.3.1 | Customer Ledger | 1d? | 2011-08-21 | 2011-08-22 |  |  |  | 61.31d |  |  |  |  |  |
| 48 | 1.8 | **CJ.POS** | 63d? | 2011-10-13 A | 2012-01-02 |  | 14% | 54.28d? | 0d |  |  |  | 538.5h | 74.5h |
| 49 | 1.8.1 | **Stock Requisition & Movement** | 27d? | 2011-10-13 A | 2011-11-16 |  | 61% | 10.58d? | 0d |  |  |  | 122.5h | 74.5h |
| 50 | 1.8.1.1 | Requisition Creation | 5.31d? | 2011-10-13 A | 2011-10-19 A |  | 100% |  |  |  | finish no earlier than 2011-10-19 | Shyam | 42.5h | 42.5h |
| 51 | 1.8.1.2 | Requisition Authorization | 1d? | 2011-10-20 A | 2011-10-22 A | 50 | 100% |  |  |  | finish no earlier than 2011-10-22 | Shyam | 8h | 8h |
| 52 | 1.8.1.3 | Goods Delivery against Requisition | 0.5d | 2011-10-23 A | 2011-10-23 A | 51 | 100% |  |  |  |  | Shyam | 4h | 4h |
| 53 | 1.8.1.4 | Goods Received from HO/Depot by TD Outlet | 0.5d | 2011-10-23 A | 2011-10-23 A | 52 | 100% |  |  |  |  | Shyam | 4h | 4h |
| 54 | 1.8.1.5 | Barcode Capturing at Goods Delivery | 2d | 2011-11-01 A | 2011-11-03 A | 52, 84 | 100% |  |  |  |  | Shyam | 16h | 16h |
| 55 | 1.8.1.6 | Integrate CJ.POS with Cassiopeia for Goods Received | 4d | 2011-11-09 | 2011-11-14 | 54 |  |  | 0d |  | start no earlier than 2011-11-09 | Shyam | 32h |  |
| 56 | 1.8.1.7 | Goods Return to HO/Depot | 1d? | 2011-11-14 | 2011-11-15 | 55 |  |  | 0d |  | start no earlier than 2011-11-12 | Shyam | 8h |  |
| 57 | 1.8.1.8 | Stock Adjustment | 1d? | 2011-11-15 | 2011-11-16 | 56 |  |  | 0d |  |  | Shyam | 8h |  |
| 58 | 1.8.2 | **HO Part** | 22d | 2011-11-16 | 2011-12-14 |  |  |  | 0d |  |  |  | 176h |  |
| 59 | 1.8.2.1 | Consumer Promotion Module | 15d | 2011-11-16 | 2011-12-06 | 57 |  |  | 0d |  |  | Shyam | 120h |  |
| 60 | 1.8.2.2 | Loyalty Module | 7d | 2011-12-06 | 2011-12-14 | 59 |  |  | 0d |  |  | Shyam | 56h |  |

| ID | WBS | Task | Duration | Start | Finish | Predecessors | Complete | Total slack | Free slack | Constraint | Resources | Work | Actual work |
| --- | --- | --- | --- | --- | --- | --- | --- | --- | --- | --- | --- | --- | --- |
| 61 | 1.8.3 | **Invoice** | 5d? | 2011-12-14 | 2011-12-21 |  |  | 0d |  |  |  | 40h |  |
| 62 | 1.8.3.1 | Retail Invoice Creation | 1d? | 2011-12-14 | 2011-12-15 | 60 |  | 0d |  |  | Shyam | 8h |  |
| 63 | 1.8.3.2 | Bulk Invoice | 1d? | 2011-12-15 | 2011-12-18 | 62 |  | 0d |  |  | Shyam | 8h |  |
| 64 | 1.8.3.3 | Dealer Invoice | 1d? | 2011-12-18 | 2011-12-19 | 63 |  | 0d |  |  | Shyam | 8h |  |
| 65 | 1.8.3.4 | Corporate Invoice | 1d? | 2011-12-19 | 2011-12-20 | 64 |  | 0d |  |  | Shyam | 8h |  |
| 66 | 1.8.3.5 | Invoice Edit | 1d? | 2011-12-20 | 2011-12-21 | 65 |  | 0d |  |  | Shyam | 8h |  |
| 67 | 1.8.4 | **ISGM** | 4d? | 2011-12-21 | 2011-12-26 |  |  | 0d |  |  |  | 32h |  |
| 68 | 1.8.4.1 | Goods Tranfer to Other Outlet | 1d? | 2011-12-21 | 2011-12-22 | 66 |  | 0d |  |  | Shyam | 8h |  |
| 69 | 1.8.4.2 | ISGM Authorization | 1d? | 2011-12-22 | 2011-12-24 | 68 |  | 0d |  |  | Shyam | 8h |  |
| 70 | 1.8.4.3 | Goods Received from Other Outlet | 1d? | 2011-12-24 | 2011-12-25 | 69 |  | 0d |  |  | Shyam | 8h |  |
| 71 | 1.8.4.4 | ISGM Return from HO/Depot | 1d? | 2011-12-25 | 2011-12-26 | 70 |  | 0d |  |  | Shyam | 8h |  |
| 72 | 1.8.5 | Admin Part | 1d? | 2011-12-26 | 2011-12-27 | 71 |  | 0d |  |  | Shyam | 8h |  |
| 73 | 1.8.6 | **Basic Data** | 4d? | 2011-12-27 | 2012-01-02 |  |  | 0d |  |  |  | 32h |  |
| 74 | 1.8.6.1 | Product Details | 1d? | 2011-12-27 | 2011-12-28 | 72 |  | 0d |  |  | Shyam | 8h |  |
| 75 | 1.8.6.2 | Running CP | 1d? | 2011-12-28 | 2011-12-29 | 74 |  | 0d |  |  | Shyam | 8h |  |
| 76 | 1.8.6.3 | CLP Customer Registration | 1d? | 2011-12-29 | 2012-01-01 | 75 |  | 0d |  |  | Shyam | 8h |  |
| 77 | 1.8.6.4 | Current Employee | 1d? | 2012-01-01 | 2012-01-02 | 76 |  | 0d |  |  | Shyam | 8h |  |
| 78 | 1.8.7 | **Reports** | 16d | 2011-11-16 | 2011-12-07 |  |  | 20d |  |  |  | 128h |  |
| 79 | 1.8.7.1 | Stock Reports (4) | 4d | 2011-11-16 | 2011-11-22 | 49 |  | 20d | 0d | start no earlier than 2011-11-13 | Shahnoor | 32h |  |
| 80 | 1.8.7.2 | Sales Reports (3) | 4d | 2011-11-22 | 2011-11-27 | 79 |  | 20d | 0d |  | Shahnoor | 32h |  |
| 81 | 1.8.7.3 | Accounts Reports (2) | 4d | 2011-11-27 | 2011-12-01 | 80 |  | 20d | 0d |  | Shahnoor | 32h |  |
| 82 | 1.8.7.4 | Reprints (3) | 4d | 2011-12-01 | 2011-12-07 | 81 |  | 20d |  |  | Shahnoor | 32h |  |
| 83 | 1.9 | **CJ.Supply Chain** | 7d | 2011-10-24 A | 2011-11-01 A |  | 100% |  |  |  |  | 56h | 56h |
| 84 | 1.9.1 | Integrate PO/CI with GRD | 7d | 2011-10-24 A | 2011-11-01 A | 53 | 100% |  |  |  | Shyam | 56h | 56h |
